# 西部IT人才网

Schedule from MS Project, 2009-11-02 to 2010-04-02, A marks actual dates.

## Calendars

- 标准: Mon-Fri 08:00-12:00, 13:00-17:00; Sat-Sun off.

## Resources

| Resource |
| --- |
| 高小川 |
| 杨炜林 |
| 宋敏 |
| 文闻 |
| 胡丹 |
| 李焕宇 |
| 王彤 |
| 庄阳 |
| 冯嘉希 |
| 张小东 |
| 宋秋玲 |
| 彭舒 |
| 王强 |
| 肖明 |
| 黄平 |
| 胡寒 |
| 朱建文 |

## Schedule

| ID | WBS | Task | Duration | Start | Finish | Remaining | Baseline start | Baseline finish | Baseline duration | Total slack | Constraint | Resources | Work |
| --- | --- | --- | --- | --- | --- | --- | --- | --- | --- | --- | --- | --- | --- |
| 1 | 1 | **立项** | 5d? | 2009-11-02 | 2009-11-06 |  |  |  |  | 0d |  |  | 184h |
| 2 | 1.1 | 编制《可行性分析报告》 | 4d | 2009-11-02 | 2009-11-05 |  |  |  |  | 0d |  | 高小川 | 32h |
| 3 | 1.2 | 编制《可评测性报告》 | 2d | 2009-11-04 | 2009-11-05 |  |  |  |  | 0d | start no earlier than 2009-11-04 | 宋秋玲 | 16h |
| 4 | 1.3 | 评审《可行性分析报告》、《可评测性报告》 | 1d? | 2009-11-06 | 2009-11-06 |  |  |  |  | 0d | start no earlier than 2009-11-06 |  |  |
| 5 | 1.4 | 估计项目开发规模、成本、周期 | 1d? | 2009-11-02 | 2009-11-02 |  |  |  |  | 0d | start no earlier than 2009-11-02 | 高小川 | 8h |
| 6 | 1.5 | 定义《项目已定义过程》 | 1d? | 2009-11-03 | 2009-11-03 |  |  |  |  | 0d | start no earlier than 2009-11-03 | 高小川 | 8h |
| 7 | 1.6 | 评审《项目已定义过程》 | 1d? | 2009-11-04 | 2009-11-04 |  |  |  |  | 0d | start no earlier than 2009-11-04 |  |  |
| 8 | 1.7 | **编制软件开发计划** | 2d? | 2009-11-05 | 2009-11-06 |  |  |  |  | 0d |  |  | 112h |
| 9 | 1.7.1 | 软件开发计划 | 2d | 2009-11-05 | 2009-11-06 |  |  |  |  | 0d | start no earlier than 2009-11-05 | 高小川 | 16h |
| 10 | 1.7.2 | 估算表(项目估计记录) | 2d? | 2009-11-05 | 2009-11-06 |  |  |  |  | 0d | start no earlier than 2009-11-05 | 高小川 | 16h |
| 11 | 1.7.3 | WBS计划(项目进度计划) | 2d? | 2009-11-05 | 2009-11-06 |  |  |  |  | 0d | start no earlier than 2009-11-05 | 高小川 | 16h |
| 12 | 1.7.4 | 配置管理计划 | 2d? | 2009-11-05 | 2009-11-06 |  |  |  |  | 0d | start no earlier than 2009-11-05 | 庄阳 | 16h |
| 13 | 1.7.5 | 软件过程与质量保证计划 | 2d? | 2009-11-05 | 2009-11-06 |  |  |  |  | 0d | start no earlier than 2009-11-05 | 肖明 | 16h |
| 14 | 1.7.6 | 风险管理计划 | 2d? | 2009-11-05 | 2009-11-06 |  |  |  |  | 0d | start no earlier than 2009-11-05 | 高小川 | 16h |
| 15 | 1.7.7 | 测试计划 | 2d? | 2009-11-05 | 2009-11-06 |  |  |  |  | 0d | start no earlier than 2009-11-05 | 宋秋玲 | 16h |
| 16 | 1.8 | 评审计划工件 | 1d? | 2009-11-06 | 2009-11-06 |  |  |  |  | 0d | finish no earlier than 2009-11-06 |  |  |
| 17 | 1.9 | 编制《项目审批表》 | 1d? | 2009-11-06 | 2009-11-06 |  |  |  |  | 0d | finish no earlier than 2009-11-06 | 高小川 | 8h |
| 18 | 1.10 | 评审《项目审批表》 | 1d? | 2009-11-06 | 2009-11-06 |  |  |  |  | 0d | finish no earlier than 2009-11-06 |  |  |
| 19 | 2 | **需求设计** | 13d? | 2009-11-09 A | 2009-11-25 | 13d? | 2009-11-02 | 2009-11-23 | 16d? | 0d |  |  | 947.2h |
| 20 | 2.1 | 获取业务需求（涉众调研请求） | 1d | 2009-11-09 A | 2009-11-09 | 1d | 2009-11-02 | 2009-11-06 | 5d? | 0d | start no earlier than 2009-11-02 | 杨炜林 | 8h |
| 21 | 2.2 | 评审（涉众调研请求） | 1d? | 2009-11-10 | 2009-11-10 |  |  |  |  | 0d | start no earlier than 2009-11-10 |  | 8h |
| 22 | 2.3 | **定义业务需求（软件需求规约）** | 6d | 2009-11-10 A | 2009-11-17 | 6d | 2009-11-05 | 2009-11-12 | 6d? | 0d |  |  | 240h |
| 23 | 2.3.1 | IT梦工厂 | 5d | 2009-11-10 A | 2009-11-16 | 5d | 2009-11-05 | 2009-11-12 | 6d? | 0d | start no earlier than 2009-11-05 | 冯嘉希 | 40h |
| 24 | 2.3.2 | 学员俱乐部 | 5d | 2009-11-10 A | 2009-11-16 | 5d | 2009-11-05 | 2009-11-12 | 6d? | 0d | start no earlier than 2009-11-05 | 张小东 | 40h |
| 25 | 2.3.3 | 后台业务 | 5d | 2009-11-11 A | 2009-11-17 | 5d | 2009-11-05 | 2009-11-12 | 6d? | 0d | start no earlier than 2009-11-05 | 张小东 | 40h |
| 26 | 2.3.4 | 职场资讯 | 5d | 2009-11-10 A | 2009-11-16 | 5d | 2009-11-05 | 2009-11-12 | 6d | 0d | start no earlier than 2009-11-05 | 胡丹 [50%] | 20h |
| 27 | 2.3.5 | 职业指导 | 5d | 2009-11-11 A | 2009-11-17 | 5d | 2009-11-05 | 2009-11-12 | 6d | 0d | start no earlier than 2009-11-05 | 胡丹 [50%] | 20h |
| 28 | 2.3.6 | 找工作 | 5d | 2009-11-10 A | 2009-11-16 | 5d | 2009-11-05 | 2009-11-12 | 6d | 0d | start no earlier than 2009-11-05 | 李焕宇 [50%] | 20h |
| 29 | 2.3.7 | 找人才 | 5d | 2009-11-11 A | 2009-11-17 | 5d | 2009-11-05 | 2009-11-12 | 6d | 0d | start no earlier than 2009-11-05 | 李焕宇 [50%] | 20h |
| 30 | 2.3.8 | 首页 | 5d | 2009-11-11 A | 2009-11-17 | 5d | 2009-11-05 | 2009-11-12 | 6d | 0d | start no earlier than 2009-11-05 | 胡丹 | 40h |
| 31 | 2.4 | 评审（软件需求规约） | 1d? | 2009-11-18 | 2009-11-18 |  |  |  |  | 0d | start no earlier than 2009-11-18 |  | 8h |

| ID | WBS | Task | Duration | Start | Finish | Remaining | Baseline start | Baseline finish | Baseline duration | Total slack | Constraint | Resources | Work |
| --- | --- | --- | --- | --- | --- | --- | --- | --- | --- | --- | --- | --- | --- |
| 32 | 2.5 | **设计界面原型风格（设计原型DEMO）** | 4d? | 2009-11-09 | 2009-11-12 |  | 2009-11-05 | 2009-11-12 | 6d? | 0d |  |  | 176h |
| 33 | 2.5.1 | 界面原型模版设计 | 2d? | 2009-11-09 | 2009-11-10 |  | 2009-11-05 | 2009-11-06 | 2d? | 0d | start no earlier than 2009-11-09 | 王彤 | 16h |
| 34 | 2.5.2 | 登录界面与主菜单界面 | 2d? | 2009-11-09 | 2009-11-10 |  | 2009-11-09 | 2009-11-10 | 2d? | 0d | start no earlier than 2009-11-09 | 王彤 | 16h |
| 35 | 2.5.3 | **业务界面** | 4d? | 2009-11-09 | 2009-11-12 |  | 2009-11-09 | 2009-11-12 | 4d? | 0d |  |  | 144h |
| 36 | 2.5.3.1 | IT梦工厂 | 4d? | 2009-11-09 | 2009-11-12 |  | 2009-11-09 | 2009-11-12 | 4d? | 0d | start no earlier than 2009-11-09 | 冯嘉希 | 32h |
| 37 | 2.5.3.2 | 学员俱乐部 | 4d? | 2009-11-09 | 2009-11-12 |  | 2009-11-09 | 2009-11-12 | 4d? | 0d | start no earlier than 2009-11-09 | 张小东 | 32h |
| 38 | 2.5.3.3 | 职场资讯 | 4d? | 2009-11-09 | 2009-11-12 |  | 2009-11-09 | 2009-11-12 | 4d? | 0d | start no earlier than 2009-11-09 | 胡丹 [50%] | 16h |
| 39 | 2.5.3.4 | 职业指导 | 4d? | 2009-11-09 | 2009-11-12 |  | 2009-11-09 | 2009-11-12 | 4d? | 0d | start no earlier than 2009-11-09 | 胡丹 [50%] | 16h |
| 40 | 2.5.3.5 | 后台页面 | 2d? | 2009-11-09 | 2009-11-10 |  | 2009-11-09 | 2009-11-10 | 2d? | 0d | start no earlier than 2009-11-09 | 张小东 | 16h |
| 41 | 2.5.3.6 | 找工作 | 4d? | 2009-11-09 | 2009-11-12 |  | 2009-11-09 | 2009-11-12 | 4d? | 0d | start no earlier than 2009-11-09 | 李焕宇 [50%] | 16h |
| 42 | 2.5.3.7 | 找人才 | 4d? | 2009-11-09 | 2009-11-12 |  | 2009-11-09 | 2009-11-12 | 4d? | 0d | start no earlier than 2009-11-09 | 李焕宇 [50%] | 16h |
| 43 | 2.6 | 评审界面原型风格（设计原型DEMO） | 1d? | 2009-11-13 | 2009-11-13 |  |  |  |  | 0d | start no earlier than 2009-11-13 |  | 8h |
| 44 | 2.7 | **需求开发** | 6d? | 2009-11-16 A | 2009-11-23 | 6d? | 2009-11-16 | 2009-11-23 | 6d? | 0d |  |  | 363.2h |
| 45 | 2.7.1 | 前景文档 | 3d? | 2009-11-16 | 2009-11-18 |  | 2009-11-16 | 2009-11-18 | 3d? | 0d | start no earlier than 2009-11-16 | 杨炜林 | 24h |
| 46 | 2.7.2 | 补充说明 | 3d? | 2009-11-16 | 2009-11-18 |  | 2009-11-16 | 2009-11-18 | 3d? | 0d | start no earlier than 2009-11-16 | 杨炜林 | 24h |
| 47 | 2.7.3 | 词汇表 | 2d? | 2009-11-16 A | 2009-11-17 | 2d? | 2009-11-16 | 2009-11-17 | 2d? | 0d | start no earlier than 2009-11-16 | 杨炜林 | 16h |
| 48 | 2.7.4 | **软件实现规约** | 6d? | 2009-11-16 | 2009-11-23 |  | 2009-11-16 | 2009-11-23 | 6d? | 0d |  |  | 291.2h |
| 49 | 2.7.4.1 | IT梦工厂 | 4d? | 2009-11-16 | 2009-11-19 |  | 2009-11-16 | 2009-11-19 | 4d? | 0d | start no earlier than 2009-11-16 | 冯嘉希 | 32h |
| 50 | 2.7.4.2 | 学员俱乐部 | 4d? | 2009-11-16 | 2009-11-19 |  | 2009-11-16 | 2009-11-19 | 4d? | 0d | start no earlier than 2009-11-16 | 张小东 | 32h |
| 51 | 2.7.4.3 | **后台业务** | 4d | 2009-11-16 | 2009-11-19 |  | 2009-11-16 | 2009-11-19 | 4d | 0d |  |  | 96h |
| 52 | 2.7.4.3.1 | 个人用户管理 | 4d | 2009-11-16 | 2009-11-19 |  | 2009-11-16 | 2009-11-19 | 4d | 0d | start no earlier than 2009-11-16 | 张小东 | 32h |
| 53 | 2.7.4.3.2 | 企业用户管理 | 4d | 2009-11-16 | 2009-11-19 |  | 2009-11-16 | 2009-11-19 | 4d | 0d | start no earlier than 2009-11-16 | 冯嘉希 | 32h |
| 54 | 2.7.4.3.3 | 系统管理 | 4d | 2009-11-16 | 2009-11-19 |  | 2009-11-16 | 2009-11-19 | 4d | 0d | start no earlier than 2009-11-16 | 张小东 | 32h |
| 55 | 2.7.4.4 | 职场资讯 | 6d | 2009-11-16 | 2009-11-23 |  | 2009-11-16 | 2009-11-23 | 6d | 0d | start no earlier than 2009-11-16 | 庄阳 | 48h |
| 56 | 2.7.4.5 | 职业指导 | 4d | 2009-11-16 | 2009-11-19 |  | 2009-11-16 | 2009-11-19 | 4d | 0d | start no earlier than 2009-11-16 | 庄阳 | 32h |
| 57 | 2.7.4.6 | 找工作 | 4d | 2009-11-16 | 2009-11-19 |  | 2009-11-16 | 2009-11-19 | 4d | 0d | start no earlier than 2009-11-16 | 李焕宇 | 19.2h |
| 58 | 2.7.4.7 | 找人才 | 4d | 2009-11-16 | 2009-11-19 |  | 2009-11-16 | 2009-11-19 | 4d | 0d | start no earlier than 2009-11-16 | 李焕宇 | 32h |
| 59 | 2.7.5 | 需求跟踪矩阵 | 1d | 2009-11-20 A | 2009-11-20 | 1d | 2009-11-20 | 2009-11-20 | 1d | 0d | start no earlier than 2009-11-20 | 杨炜林 | 8h |
| 60 | 2.8 | 评审（前景文档、补充规约、词汇表、软件实现规约） | 1d | 2009-11-23 A | 2009-11-23 | 1d | 2009-11-23 | 2009-11-23 | 1d | 0d | start no earlier than 2009-11-23 |  |  |
| 61 | 2.9 | 设计测试用例 | 2d | 2009-11-23 A | 2009-11-24 | 2d | 2009-11-23 | 2009-11-23 | 1d | 0d | start no earlier than 2009-11-23 | 宋秋玲 | 16h |
| 62 | 2.10 | 评审测试用例 | 1d | 2009-11-24 A | 2009-11-24 | 1d | 2009-11-23 | 2009-11-23 | 1d | 0d | start no earlier than 2009-11-23 |  |  |
| 63 | 2.11 | 重新评估项目规模和风险 | 2d | 2009-11-23 A | 2009-11-24 | 2d | 2009-11-23 | 2009-11-23 | 1d | 0d | start no earlier than 2009-11-23 | 高小川 | 16h |

| ID | WBS | Task | Type | Duration | Start | Finish | Predecessors | Remaining | Baseline start | Baseline finish | Baseline duration | Total slack | Constraint | Resources | Work |
| --- | --- | --- | --- | --- | --- | --- | --- | --- | --- | --- | --- | --- | --- | --- | --- |
| 64 | 2.12 | **更新软件开发计划** |  | 1d | 2009-11-25 A | 2009-11-25 |  | 1d | 2009-11-23 | 2009-11-23 | 1d | 0d |  |  | 16h |
| 65 | 2.12.1 | 软件开发计划 |  | 1d | 2009-11-25 A | 2009-11-25 |  | 1d | 2009-11-23 | 2009-11-23 | 1d | 0d | start no earlier than 2009-11-23 | 高小川 | 8h |
| 66 | 2.12.2 | WBS计划(项目进度计划) |  | 1d | 2009-11-25 A | 2009-11-25 |  | 1d | 2009-11-23 | 2009-11-23 | 1d | 0d | start no earlier than 2009-11-23 | 高小川 | 8h |
| 67 | 2.13 | 评审更新后的软件开发计划 |  | 1d | 2009-11-25 A | 2009-11-25 |  | 1d | 2009-11-23 | 2009-11-23 | 1d | 0d | start no earlier than 2009-11-23 |  |  |
| 68 | 2.14 | 需求里程牌 | milestone | 1d | 2009-11-25 | 2009-11-25 |  |  | 2009-11-23 | 2009-11-23 | 1d? | 0d | start no earlier than 2009-11-25 | 高小川; 杨炜林; 张小东; 冯嘉希; 李焕宇; 庄阳; 胡丹; 王强; 肖明; 宋秋玲; 王彤 | 88h |
| 69 | 3 | **设计阶段** |  | 7d? | 2009-11-26 | 2009-12-04 |  |  | 2009-11-24 | 2009-12-25 | 24d? | 0d |  |  | 704h |
| 70 | 3.1 | 系统架构设计 |  | 4d | 2009-11-26 | 2009-12-01 |  |  | 2009-11-24 | 2009-11-27 | 4d | 0d | start no earlier than 2009-11-26 | 杨炜林 | 32h |
| 71 | 3.2 | 评审系统架构说明书 |  | 1d? | 2009-12-01 | 2009-12-01 |  |  |  |  |  | 0d | start no earlier than 2009-12-01 |  | 8h |
| 72 | 3.3 | 设计数据模型（CDM 、PDM和数据库设计说明书） |  | 5d? | 2009-11-27 | 2009-12-03 |  |  | 2009-11-24 | 2009-11-30 | 5d? | 0d | start no earlier than 2009-11-27 | 杨炜林 | 40h |
| 73 | 3.4 | 评审数据模型工件 |  | 1d? | 2009-12-03 | 2009-12-03 |  |  |  |  |  | 0d | start no earlier than 2009-12-03 |  | 8h |
| 74 | 3.5 | **编制分析模型与设计模型** |  | 7d | 2009-11-26 | 2009-12-04 |  |  | 2009-11-24 | 2009-11-30 | 5d | 0d |  |  | 536h |
| 75 | 3.5.1 | **首页** |  | 6d | 2009-11-26 | 2009-12-03 |  |  |  |  |  | 0d |  |  | 112h |
| 76 | 3.5.1.1 | 用户注册 |  | 2d | 2009-11-26 | 2009-11-27 |  |  |  |  |  | 0d | start no earlier than 2009-11-26 | 李焕宇 | 16h |
| 77 | 3.5.1.2 | 个人用户注册 |  | 2d | 2009-11-26 | 2009-11-27 |  |  |  |  |  | 0d | start no earlier than 2009-11-26 | 李焕宇 | 16h |
| 78 | 3.5.1.3 | **企业用户注册** |  | 1d | 2009-11-30 | 2009-11-30 |  |  |  |  |  | 0d |  |  | 16h |
| 79 | 3.5.1.3.1 | 企业用户注册 |  | 1d | 2009-11-30 | 2009-11-30 | 77 |  |  |  |  | 0d | start no earlier than 2009-11-26 | 李焕宇 | 8h |
| 80 | 3.5.1.3.2 | 企业合法性审核 |  | 1d | 2009-11-30 | 2009-11-30 | 77 |  |  |  |  | 0d | start no earlier than 2009-11-26 | 李焕宇 | 8h |
| 81 | 3.5.1.4 | 用户登录 |  | 1d | 2009-11-30 | 2009-11-30 | 77 |  |  |  |  | 0d | start no earlier than 2009-11-26 | 李焕宇 | 8h |
| 82 | 3.5.1.5 | **公共信息** |  | 1d | 2009-12-01 | 2009-12-01 |  |  |  |  |  | 0d |  |  | 24h |
| 83 | 3.5.1.5.1 | 公告牌 |  | 1d | 2009-12-01 | 2009-12-01 | 81 |  |  |  |  | 0d | start no earlier than 2009-11-29 | 李焕宇 | 8h |
| 84 | 3.5.1.5.2 | 职位速览 |  | 1d | 2009-12-01 | 2009-12-01 | 81 |  |  |  |  | 0d | start no earlier than 2009-11-29 | 李焕宇 | 8h |
| 85 | 3.5.1.5.3 | 公共信息管理中心（后台） |  | 1d | 2009-12-01 | 2009-12-01 | 81 |  |  |  |  | 0d | start no earlier than 2009-11-29 | 李焕宇 | 8h |
| 86 | 3.5.1.6 | **人力资源服务** |  | 2d | 2009-12-02 | 2009-12-03 |  |  |  |  |  | 0d |  |  | 32h |
| 87 | 3.5.1.6.1 | 就业明星榜 |  | 1d | 2009-12-02 | 2009-12-02 | 85 |  |  |  |  | 0d | start no earlier than 2009-11-30 | 李焕宇 | 8h |
| 88 | 3.5.1.6.2 | 品牌企业展示 |  | 1d | 2009-12-03 | 2009-12-03 | 87 |  |  |  |  | 0d | start no earlier than 2009-12-01 | 李焕宇 | 8h |
| 89 | 3.5.1.6.3 | 人力资源服务信息展示 |  | 1d | 2009-12-03 | 2009-12-03 | 87 |  |  |  |  | 0d | start no earlier than 2009-12-01 | 李焕宇 | 8h |
| 90 | 3.5.1.6.4 | 人力资源服务管理中心（后台） |  | 1d | 2009-12-03 | 2009-12-03 | 87 |  |  |  |  | 0d | start no earlier than 2009-12-01 | 李焕宇 | 8h |

| ID | WBS | Task | Duration | Start | Finish | Total slack | Constraint | Resources | Work |
| --- | --- | --- | --- | --- | --- | --- | --- | --- | --- |
| 91 | 3.5.2 | **找工作** | 1d | 2009-12-04 | 2009-12-04 | 0d |  |  | 40h |
| 92 | 3.5.2.1 | 个人用户高级搜索 | 1d | 2009-12-04 | 2009-12-04 | 0d | start no earlier than 2009-12-04 | 李焕宇 | 8h |
| 93 | 3.5.2.2 | 个人用户投送简历 | 1d | 2009-12-04 | 2009-12-04 | 0d | start no earlier than 2009-12-04 | 李焕宇 | 8h |
| 94 | 3.5.2.3 | 个人用户招聘信息收藏 | 1d | 2009-12-04 | 2009-12-04 | 0d | start no earlier than 2009-12-04 | 李焕宇 | 8h |
| 95 | 3.5.2.4 | 显示热门职位 | 1d | 2009-12-04 | 2009-12-04 | 0d | start no earlier than 2009-12-04 | 李焕宇 | 8h |
| 96 | 3.5.2.5 | 职位分类搜索 | 1d | 2009-12-04 | 2009-12-04 | 0d | start no earlier than 2009-12-04 | 李焕宇 | 8h |
| 97 | 3.5.3 | **找人才** | 1d | 2009-12-04 | 2009-12-04 | 0d |  |  | 40h |
| 98 | 3.5.3.1 | 企业用户高级搜索 | 1d | 2009-12-04 | 2009-12-04 | 0d | start no earlier than 2009-12-04 | 胡丹 | 8h |
| 99 | 3.5.3.2 | 企业用户招聘 | 1d | 2009-12-04 | 2009-12-04 | 0d | start no earlier than 2009-12-04 | 胡丹 | 8h |
| 100 | 3.5.3.3 | 企业用户招聘信息收藏 | 1d | 2009-12-04 | 2009-12-04 | 0d | start no earlier than 2009-12-04 | 胡丹 | 8h |
| 101 | 3.5.3.4 | 显示新建用户 | 1d | 2009-12-04 | 2009-12-04 | 0d | start no earlier than 2009-12-04 | 胡丹 | 8h |
| 102 | 3.5.3.5 | 人才分类搜索 | 1d | 2009-12-04 | 2009-12-04 | 0d | start no earlier than 2009-12-04 | 胡丹 | 8h |
| 103 | 3.5.4 | **职业指导** | 7d | 2009-11-26 | 2009-12-04 | 0d |  |  | 72h |
| 104 | 3.5.4.1 | 简历指南 | 2d | 2009-11-26 | 2009-11-27 | 0d | start no earlier than 2009-11-26 | 张小东 | 16h |
| 105 | 3.5.4.2 | 面试宝典 | 2d | 2009-11-26 | 2009-11-27 | 0d | start no earlier than 2009-11-26 | 张小东 | 16h |
| 106 | 3.5.4.3 | 职业规划 | 2d | 2009-11-30 | 2009-12-01 | 0d | start no earlier than 2009-11-28 | 张小东 | 16h |
| 107 | 3.5.4.4 | 薪资参考 | 2d | 2009-12-02 | 2009-12-03 | 0d | start no earlier than 2009-12-02 | 张小东 | 16h |
| 108 | 3.5.4.5 | 职业指导管理中心（后台） | 1d | 2009-12-04 | 2009-12-04 | 0d | start no earlier than 2009-12-04 | 张小东 | 8h |
| 109 | 3.5.5 | **职场资讯** | 4d | 2009-11-26 | 2009-12-01 | 0d |  |  | 80h |
| 110 | 3.5.5.1 | 政策法规 | 2d | 2009-11-26 | 2009-11-27 | 0d | start no earlier than 2009-11-26 | 庄阳 | 16h |
| 111 | 3.5.5.2 | 招聘会预告 | 2d | 2009-11-30 | 2009-12-01 | 0d | start no earlier than 2009-11-30 | 庄阳 | 16h |
| 112 | 3.5.5.3 | HR管理 | 2d | 2009-11-30 | 2009-12-01 | 0d | start no earlier than 2009-11-30 | 庄阳 | 16h |
| 113 | 3.5.5.4 | 热点话题 | 2d | 2009-11-30 | 2009-12-01 | 0d | start no earlier than 2009-11-30 | 庄阳 | 16h |
| 114 | 3.5.5.5 | 职场资讯管理中心（后台） | 2d | 2009-11-30 | 2009-12-01 | 0d | start no earlier than 2009-11-30 | 庄阳 | 16h |

| ID | WBS | Task | Type | Duration | Start | Finish | Remaining | Baseline start | Baseline finish | Baseline duration | Total slack | Constraint | Resources | Work |
| --- | --- | --- | --- | --- | --- | --- | --- | --- | --- | --- | --- | --- | --- | --- |
| 115 | 3.5.6 | **IT梦工场** |  | 2d | 2009-12-02 | 2009-12-03 |  |  |  |  | 0d |  |  | 64h |
| 116 | 3.5.6.1 | 课程体系推荐 |  | 2d | 2009-12-02 | 2009-12-03 |  |  |  |  | 0d | start no earlier than 2009-12-02 | 庄阳 | 16h |
| 117 | 3.5.6.2 | 最新课程信息查看 |  | 2d | 2009-12-02 | 2009-12-03 |  |  |  |  | 0d | start no earlier than 2009-12-02 | 庄阳 | 16h |
| 118 | 3.5.6.3 | 精品课程推荐 |  | 2d | 2009-12-02 | 2009-12-03 |  |  |  |  | 0d | start no earlier than 2009-12-02 | 庄阳 | 16h |
| 119 | 3.5.6.4 | IT梦工场管理中心（后台） |  | 2d | 2009-12-02 | 2009-12-03 |  |  |  |  | 0d | start no earlier than 2009-12-02 | 庄阳 | 16h |
| 120 | 3.5.7 | **学员俱乐部** |  | 1d | 2009-11-30 | 2009-11-30 |  |  |  |  | 0d |  |  | 16h |
| 121 | 3.5.7.1 | 用户意见反馈 |  | 1d | 2009-11-30 | 2009-11-30 |  |  |  |  | 0d | start no earlier than 2009-11-30 | 庄阳 | 8h |
| 122 | 3.5.7.2 | 学员信息查询（登录的实训学员和培训学员查询自己相应的信息） |  | 1d | 2009-11-30 | 2009-11-30 |  |  |  |  | 0d | start no earlier than 2009-11-30 | 庄阳 | 8h |
| 123 | 3.5.8 | **用户管理** |  | 4d | 2009-11-26 | 2009-12-01 |  |  |  |  | 0d |  |  | 32h |
| 124 | 3.5.8.1 | 个人管理中心 |  | 4d | 2009-11-26 | 2009-12-01 |  |  |  |  | 0d | start no earlier than 2009-11-26 | 胡丹 | 32h |
| 125 | 3.5.9 | **华迪学员管理（实训，培训的学员）** |  | 1d | 2009-12-03 | 2009-12-03 |  |  |  |  | 0d |  |  | 24h |
| 126 | 3.5.9.1 | 华迪学员信息维护 |  | 1d | 2009-12-03 | 2009-12-03 |  |  |  |  | 0d | start no earlier than 2009-12-02 | 胡丹 | 8h |
| 127 | 3.5.9.2 | 批量导入/导出学员信息 |  | 1d | 2009-12-03 | 2009-12-03 |  |  |  |  | 0d | start no earlier than 2009-12-03 | 胡丹 | 8h |
| 128 | 3.5.9.3 | 企业管理中心 |  | 1d | 2009-12-03 | 2009-12-03 |  |  |  |  | 0d | start no earlier than 2009-12-03 | 冯嘉希 | 8h |
| 129 | 3.5.10 | **系统管理** |  | 7d | 2009-11-26 | 2009-12-04 |  |  |  |  | 0d |  |  | 56h |
| 130 | 3.5.10.1 | 权限管理 |  | 4d | 2009-11-26 | 2009-12-01 |  |  |  |  | 0d | start no earlier than 2009-11-26 | 冯嘉希 | 32h |
| 131 | 3.5.10.2 | 用户管理 |  | 3d | 2009-12-02 | 2009-12-04 |  |  |  |  | 0d | start no earlier than 2009-12-02 | 冯嘉希 | 24h |
| 132 | 3.6 | 评审分析模型与设计模型 |  | 1d | 2009-12-04 | 2009-12-04 |  | 2009-12-01 | 2009-12-02 | 2d | 0d | start no earlier than 2009-12-04 |  | 8h |
| 133 | 3.7 | 设计里程碑 | milestone | 1d | 2009-12-04 | 2009-12-04 |  | 2009-12-01 | 2009-12-02 | 2d | 0d | start no earlier than 2009-12-04 | 高小川; 杨炜林; 张小东; 冯嘉希; 李焕宇; 庄阳; 胡丹; 王强; 肖明 | 72h |
| 134 | 4 | **编码阶段** |  | 14d | 2009-12-07 A | 2009-12-24 | 14d | 2009-11-30 | 2009-12-18 | 15d | 0d |  |  | 1548h |
| 135 | 4.1 | **编码和单元测试** |  | 14d | 2009-12-07 A | 2009-12-24 | 14d | 2009-11-24 | 2009-11-30 | 5d | 0d |  |  | 1068h |
| 136 | 4.1.1 | **首页** |  | 12d | 2009-12-07 | 2009-12-22 |  |  |  |  | 0d |  |  | 228h |
| 137 | 4.1.1.1 | **用户注册** |  | 4d | 2009-12-17 | 2009-12-22 |  |  |  |  | 0d |  | 冯嘉希 | 80h |
| 138 | 4.1.1.1.1 | 个人用户注册 |  | 2d | 2009-12-21 | 2009-12-22 |  |  |  |  | 0d | start no earlier than 2009-12-20 | 冯嘉希 | 16h |

| ID | WBS | Task | Duration | Start | Finish | Remaining | Total slack | Constraint | Deadline | Resources | Work |
| --- | --- | --- | --- | --- | --- | --- | --- | --- | --- | --- | --- |
| 139 | 4.1.1.1.2 | **企业用户注册** | 2d | 2009-12-17 | 2009-12-18 |  | 1d |  |  |  | 32h |
| 140 | 4.1.1.1.2.1 | 企业用户注册 | 2d | 2009-12-17 | 2009-12-18 |  | 1d | start no earlier than 2009-12-17 | 2009-12-21 | 冯嘉希 | 16h |
| 141 | 4.1.1.1.2.2 | 企业合法性审核 | 2d | 2009-12-17 | 2009-12-18 |  | 1d | start no earlier than 2009-12-17 | 2009-12-21 | 冯嘉希 | 16h |
| 142 | 4.1.1.2 | 用户登录 | 2d | 2009-12-17 | 2009-12-18 |  | 0d | start no earlier than 2009-12-17 |  | 冯嘉希 | 16h |
| 143 | 4.1.1.3 | 代码走查 | 0.5d | 2009-12-18 | 2009-12-18 |  | 0.5d | start no earlier than 2009-12-18 | 2009-12-18 |  | 4h |
| 144 | 4.1.1.4 | **公共信息** | 3d | 2009-12-14 | 2009-12-16 |  | 0d |  |  |  | 52h |
| 145 | 4.1.1.4.1 | 公告牌 | 2d | 2009-12-15 | 2009-12-16 |  | 1d | start no earlier than 2009-12-15 | 2009-12-17 | 冯嘉希 | 16h |
| 146 | 4.1.1.4.2 | 职位速览 | 2d | 2009-12-14 | 2009-12-15 |  | 1d | start no earlier than 2009-12-13 | 2009-12-16 | 冯嘉希 | 16h |
| 147 | 4.1.1.4.3 | 公共信息管理中心（后台） | 2d | 2009-12-14 | 2009-12-15 |  | 0d | start no earlier than 2009-12-14 |  | 冯嘉希 | 16h |
| 148 | 4.1.1.4.4 | 代码走查 | 0.5d | 2009-12-16 | 2009-12-16 |  | 0.5d | start no earlier than 2009-12-16 | 2009-12-16 |  | 4h |
| 149 | 4.1.1.5 | **人力资源服务** | 5d | 2009-12-07 | 2009-12-11 |  | 0d |  |  |  | 76h |
| 150 | 4.1.1.5.1 | 就业明星榜 | 2d | 2009-12-07 | 2009-12-08 |  | 0d | start no earlier than 2009-12-07 | 2009-12-08 | 冯嘉希 | 16h |
| 151 | 4.1.1.5.2 | 品牌企业展示 | 2d | 2009-12-07 | 2009-12-08 |  | 1d | start no earlier than 2009-12-07 | 2009-12-09 | 冯嘉希 | 16h |
| 152 | 4.1.1.5.3 | 人力资源服务信息展示 | 3d | 2009-12-09 | 2009-12-11 |  | 0d | start no earlier than 2009-12-09 | 2009-12-11 | 冯嘉希 | 24h |
| 153 | 4.1.1.5.4 | 人力资源服务管理中心（后台） | 2d | 2009-12-09 | 2009-12-10 |  | 1d | start no earlier than 2009-12-09 | 2009-12-11 | 冯嘉希 | 16h |
| 154 | 4.1.1.5.5 | 代码走查 | 0.5d | 2009-12-11 | 2009-12-11 |  | 0.5d | start no earlier than 2009-12-10 | 2009-12-11 |  | 4h |
| 155 | 4.1.2 | **找工作** | 5.5d | 2009-12-07 | 2009-12-14 |  | 0d |  |  |  | 100h |
| 156 | 4.1.2.1 | 个人用户高级搜索 | 3d | 2009-12-07 | 2009-12-09 |  | 0d | start no earlier than 2009-12-07 |  | 李焕宇 | 24h |
| 157 | 4.1.2.2 | 个人用户投送简历 | 3d | 2009-12-07 | 2009-12-09 |  | 1d | start no earlier than 2009-12-07 | 2009-12-10 | 李焕宇 | 24h |
| 158 | 4.1.2.3 | 个人用户招聘信息收藏 | 2d | 2009-12-10 | 2009-12-11 |  | 0d | start no earlier than 2009-12-10 | 2009-12-11 | 李焕宇 | 16h |
| 159 | 4.1.2.4 | 显示热门职位 | 2d | 2009-12-10 | 2009-12-11 |  | 1d | start no earlier than 2009-12-10 | 2009-12-14 | 李焕宇 | 16h |
| 160 | 4.1.2.5 | 职位分类搜索 | 2d | 2009-12-10 | 2009-12-11 |  | 1d | start no earlier than 2009-12-10 | 2009-12-14 | 李焕宇 | 16h |
| 161 | 4.1.2.6 | 代码走查 | 0.5d | 2009-12-14 | 2009-12-14 |  | 0.5d | start no earlier than 2009-12-14 | 2009-12-15 |  | 4h |
| 162 | 4.1.3 | **找人才** | 7d | 2009-12-14 A | 2009-12-22 | 7d | 0d |  |  |  | 100h |
| 163 | 4.1.3.1 | 企业用户高级搜索 | 3d | 2009-12-14 A | 2009-12-16 | 3d | 0d | start no earlier than 2009-12-02 |  | 李焕宇 | 24h |
| 164 | 4.1.3.2 | 企业用户招聘 | 3d | 2009-12-14 A | 2009-12-16 | 3d | 1d | start no earlier than 2009-12-03 | 2009-12-17 | 李焕宇 | 24h |
| 165 | 4.1.3.3 | 企业用户招聘信息收藏 | 2d | 2009-12-17 | 2009-12-18 |  | 1d | start no earlier than 2009-12-17 | 2009-12-21 | 李焕宇 | 16h |
| 166 | 4.1.3.4 | 显示新建用户 | 2d | 2009-12-17 A | 2009-12-18 | 2d | 1d | start no earlier than 2009-12-03 | 2009-12-21 | 李焕宇 | 16h |
| 167 | 4.1.3.5 | 人才分类搜索 | 2d | 2009-12-21 A | 2009-12-22 | 2d | 0d | start no earlier than 2009-12-03 |  | 李焕宇 | 16h |
| 168 | 4.1.3.6 | 代码走查 | 1d | 2009-12-22 | 2009-12-22 |  | 0d | start no earlier than 2009-12-22 | 2009-12-21 |  | 4h |

| ID | WBS | Task | Duration | Start | Finish | Total slack | Constraint | Deadline | Resources | Work |
| --- | --- | --- | --- | --- | --- | --- | --- | --- | --- | --- |
| 169 | 4.1.4 | **就业指导** | 4.5d | 2009-12-07 | 2009-12-11 | 0d |  |  |  | 84h |
| 170 | 4.1.4.1 | 简历指南 | 2d | 2009-12-07 | 2009-12-08 | 0d | start no earlier than 2009-12-07 |  | 杨炜林 | 16h |
| 171 | 4.1.4.2 | 面试宝典 | 2d | 2009-12-07 | 2009-12-08 | 1d | start no earlier than 2009-12-07 | 2009-12-09 | 杨炜林 | 16h |
| 172 | 4.1.4.3 | 职业规划 | 2d | 2009-12-07 | 2009-12-08 | 1d | start no earlier than 2009-12-06 | 2009-12-09 | 杨炜林 | 16h |
| 173 | 4.1.4.4 | 薪资参考 | 2d | 2009-12-09 | 2009-12-10 | 0d | start no earlier than 2009-12-09 |  | 杨炜林 | 16h |
| 174 | 4.1.4.5 | 职业指导管理中心（后台） | 2d | 2009-12-09 | 2009-12-10 | 1d | start no earlier than 2009-12-09 | 2009-12-11 | 杨炜林 | 16h |
| 175 | 4.1.4.6 | 代码走查 | 0.5d | 2009-12-11 | 2009-12-11 | 0.5d | start no earlier than 2009-12-10 | 2009-12-12 |  | 4h |
| 176 | 4.1.5 | **职场资讯** | 3.5d | 2009-12-11 | 2009-12-16 | 0.5d |  |  |  | 84h |
| 177 | 4.1.5.1 | 政策法规 | 2d | 2009-12-11 | 2009-12-14 | 1d | start no earlier than 2009-12-11 | 2009-12-15 | 杨炜林 | 16h |
| 178 | 4.1.5.2 | 招聘会预告 | 2d | 2009-12-11 | 2009-12-14 | 1d | start no earlier than 2009-12-11 | 2009-12-15 | 杨炜林 | 16h |
| 179 | 4.1.5.3 | HR管理 | 2d | 2009-12-11 | 2009-12-14 | 1d | start no earlier than 2009-12-11 | 2009-12-15 | 杨炜林 | 16h |
| 180 | 4.1.5.4 | 热点话题 | 2d | 2009-12-14 | 2009-12-15 | 0d | start no earlier than 2009-12-13 |  | 杨炜林 | 16h |
| 181 | 4.1.5.5 | 职场资讯管理中心（后台） | 2d | 2009-12-14 | 2009-12-15 | 1d | start no earlier than 2009-12-13 | 2009-12-16 | 杨炜林 | 16h |
| 182 | 4.1.5.6 | 代码走查 | 0.5d | 2009-12-16 | 2009-12-16 | 0.5d | start no earlier than 2009-12-16 | 2009-12-16 |  | 4h |
| 183 | 4.1.6 | **IT梦工场** | 2.5d | 2009-12-16 | 2009-12-18 | 0d |  |  |  | 68h |
| 184 | 4.1.6.1 | 课程体系推荐 | 2d | 2009-12-16 | 2009-12-17 | 0d | start no earlier than 2009-12-16 |  | 杨炜林 | 16h |
| 185 | 4.1.6.2 | 最新课程信息查看 | 2d | 2009-12-16 | 2009-12-17 | 1d | start no earlier than 2009-12-16 | 2009-12-18 | 杨炜林 | 16h |
| 186 | 4.1.6.3 | 精品课程推荐 | 2d | 2009-12-16 | 2009-12-17 | 1d | start no earlier than 2009-12-16 | 2009-12-18 | 杨炜林 | 16h |
| 187 | 4.1.6.4 | IT梦工场管理中心（后台） | 2d | 2009-12-16 | 2009-12-17 | 1d | start no earlier than 2009-12-16 | 2009-12-18 | 杨炜林 | 16h |
| 188 | 4.1.6.5 | 代码走查 | 0.5d | 2009-12-18 | 2009-12-18 | 0.5d | start no earlier than 2009-12-18 | 2009-12-18 |  | 4h |
| 189 | 4.1.7 | **学员俱乐部** | 5d | 2009-12-07 | 2009-12-11 | 0d |  |  |  | 44h |
| 190 | 4.1.7.1 | 用户意见反馈 | 2d | 2009-12-07 | 2009-12-08 | 1d | start no earlier than 2009-12-07 | 2009-12-09 | 胡丹 | 16h |
| 191 | 4.1.7.2 | 学员信息查询（登录的实训学员和培训学员查询自己相应的信息） | 3d | 2009-12-09 | 2009-12-11 | 0d | start no earlier than 2009-12-09 |  | 胡丹 | 24h |
| 192 | 4.1.7.3 | 代码走查 | 0.5d | 2009-12-11 | 2009-12-11 | 0.5d | start no earlier than 2009-12-11 | 2009-12-11 |  | 4h |

| ID | WBS | Task | Duration | Start | Finish | Remaining | Baseline start | Baseline finish | Baseline duration | Total slack | Free slack | Constraint | Deadline | Resources | Work |
| --- | --- | --- | --- | --- | --- | --- | --- | --- | --- | --- | --- | --- | --- | --- | --- |
| 193 | 4.1.8 | **用户管理** | 5d | 2009-12-07 | 2009-12-11 |  |  |  |  | 0d |  |  |  |  | 100h |
| 194 | 4.1.8.1 | **企业管理中心** | 5d | 2009-12-07 | 2009-12-11 |  |  |  |  | 0d |  |  |  |  | 100h |
| 195 | 4.1.8.1.1 | **修改密码** | 3d | 2009-12-07 | 2009-12-09 |  |  |  |  | 0d |  |  |  |  | 48h |
| 196 | 4.1.8.1.1.1 | 添加基本信息 | 3d | 2009-12-07 | 2009-12-09 |  |  |  |  | 0d |  | start no earlier than 2009-12-07 |  | 张小东 | 24h |
| 197 | 4.1.8.1.1.2 | 修改信息 | 3d | 2009-12-07 | 2009-12-09 |  |  |  |  | 1d |  | start no earlier than 2009-12-07 | 2009-12-10 | 张小东 | 24h |
| 198 | 4.1.8.1.2 | **招聘管理** | 2d | 2009-12-10 | 2009-12-11 |  |  |  |  | 0d |  |  |  |  | 48h |
| 199 | 4.1.8.1.2.1 | 职位列表 | 2d | 2009-12-10 | 2009-12-11 |  |  |  |  | 0d |  | start no earlier than 2009-12-10 |  | 张小东 | 16h |
| 200 | 4.1.8.1.2.2 | 添加职位 | 2d | 2009-12-10 | 2009-12-11 |  |  |  |  | 1d |  | start no earlier than 2009-12-10 | 2009-12-14 | 张小东 | 16h |
| 201 | 4.1.8.1.2.3 | 查看简历收藏列表 | 2d | 2009-12-10 | 2009-12-11 |  |  |  |  | 1d |  | start no earlier than 2009-12-10 | 2009-12-14 | 张小东 | 16h |
| 202 | 4.1.8.1.3 | 代码走查 | 0.5d | 2009-12-11 | 2009-12-11 |  |  |  |  | 0.5d |  | start no earlier than 2009-12-11 | 2009-12-11 |  | 4h |
| 203 | 4.1.9 | **华迪学员管理（实训，培训的学员）** | 9d | 2009-12-14 A | 2009-12-24 | 9d |  |  |  | 0d |  |  |  |  | 228h |
| 204 | 4.1.9.1 | 华迪学员信息维护 | 3d | 2009-12-14 A | 2009-12-16 | 3d |  |  |  | 1d |  | start no earlier than 2009-11-30 | 2009-12-17 | 胡丹 | 24h |
| 205 | 4.1.9.2 | 批量导入/导出学员信息 | 4d | 2009-12-17 A | 2009-12-22 | 4d |  |  |  | 0d |  | start no earlier than 2009-11-30 |  | 胡丹 | 32h |
| 206 | 4.1.9.3 | **个人管理中心** | 9d | 2009-12-14 | 2009-12-24 |  |  |  |  | 0d |  |  |  | 张小东 | 168h |
| 207 | 4.1.9.3.1 | 简历管理 | 3d | 2009-12-14 | 2009-12-16 |  |  |  |  | 0d |  | start no earlier than 2009-12-13 |  | 张小东 | 24h |
| 208 | 4.1.9.3.2 | 面试邀请 | 3d | 2009-12-14 | 2009-12-16 |  |  |  |  | 1d |  | start no earlier than 2009-12-14 | 2009-12-17 | 张小东 | 24h |
| 209 | 4.1.9.3.3 | 申请记录 | 2d | 2009-12-17 | 2009-12-18 |  |  |  |  | 1d |  | start no earlier than 2009-12-17 | 2009-12-21 | 张小东 | 16h |
| 210 | 4.1.9.3.4 | 职位收藏 | 2d | 2009-12-17 | 2009-12-18 |  |  |  |  | 1d |  | start no earlier than 2009-12-17 | 2009-12-21 | 张小东 | 16h |
| 211 | 4.1.9.3.5 | 外发简历 | 2d | 2009-12-23 | 2009-12-24 |  |  |  |  | 0d |  | finish no earlier than 2009-12-24 |  | 张小东 | 16h |
| 212 | 4.1.9.4 | 代码走查 | 1d | 2009-12-24 | 2009-12-24 |  |  |  |  | -3d | 0d | start no earlier than 2009-12-24 | 2009-12-18 |  | 4h |
| 213 | 4.1.10 | **系统管理** | 4d | 2009-12-17 | 2009-12-22 |  |  |  |  | 0d |  |  |  |  | 32h |
| 214 | 4.1.10.1 | 权限管理 | 2d | 2009-12-17 | 2009-12-18 |  |  |  |  | 1d |  | start no earlier than 2009-12-17 | 2009-12-21 | 杨炜林 | 16h |
| 215 | 4.1.10.2 | 用户管理 | 2d | 2009-12-21 | 2009-12-22 |  |  |  |  | 0d |  | start no earlier than 2009-12-21 |  | 杨炜林 | 16h |
| 216 | 4.2 | **集成每个子系统** | 5d | 2009-12-18 | 2009-12-24 |  | 2009-12-16 | 2009-12-21 | 4d? | 0d |  |  |  | 杨炜林 | 400h |
| 217 | 4.2.1 | 集成《首页》 | 5d | 2009-12-18 | 2009-12-24 |  | 2009-12-16 | 2009-12-21 | 4d? | 0d |  | finish no earlier than 2009-12-24 |  | 杨炜林 | 40h |
| 218 | 4.2.2 | 集成《找工作》 | 5d | 2009-12-18 | 2009-12-24 |  | 2009-12-16 | 2009-12-21 | 4d? | 0d |  | finish no earlier than 2009-12-24 |  | 杨炜林 | 40h |
| 219 | 4.2.3 | 集成《找人才》 | 5d | 2009-12-18 | 2009-12-24 |  | 2009-12-16 | 2009-12-21 | 4d? | 0d |  | finish no earlier than 2009-12-24 |  | 杨炜林 | 40h |
| 220 | 4.2.4 | 集成《职业指导》 | 5d | 2009-12-18 | 2009-12-24 |  | 2009-12-16 | 2009-12-21 | 4d? | 0d |  | finish no earlier than 2009-12-24 |  | 杨炜林 | 40h |
| 221 | 4.2.5 | 集成《职场资讯》 | 5d | 2009-12-18 | 2009-12-24 |  | 2009-12-16 | 2009-12-21 | 4d? | 0d |  | finish no earlier than 2009-12-24 |  | 杨炜林 | 40h |
| 222 | 4.2.6 | 集成《IT梦工厂》 | 5d | 2009-12-18 | 2009-12-24 |  | 2009-12-16 | 2009-12-21 | 4d? | 0d |  | finish no earlier than 2009-12-24 |  | 杨炜林 | 40h |
| 223 | 4.2.7 | 集成《学员俱乐部》 | 5d | 2009-12-18 | 2009-12-24 |  | 2009-12-16 | 2009-12-21 | 4d? | 0d |  | finish no earlier than 2009-12-24 |  | 杨炜林 | 40h |
| 224 | 4.2.8 | 集成《华迪学员管理》 | 5d | 2009-12-18 | 2009-12-24 |  | 2009-12-16 | 2009-12-21 | 4d? | 0d |  | finish no earlier than 2009-12-24 |  | 杨炜林 | 40h |
| 225 | 4.2.9 | 集成《系统管理》 | 5d | 2009-12-18 | 2009-12-24 |  | 2009-12-16 | 2009-12-21 | 4d? | 0d |  | finish no earlier than 2009-12-24 |  | 杨炜林 | 40h |

| ID | WBS | Task | Type | Duration | Start | Finish | Baseline start | Baseline finish | Baseline duration | Total slack | Constraint | Deadline | Resources | Work |
| --- | --- | --- | --- | --- | --- | --- | --- | --- | --- | --- | --- | --- | --- | --- |
| 226 | 4.3 | **集成系统** |  | 5d | 2009-12-18 | 2009-12-24 | 2009-12-16 | 2009-12-21 | 4d? | 0d |  |  | 杨炜林 | 80h |
| 227 | 4.3.1 | 集成系统 |  | 5d | 2009-12-18 | 2009-12-24 | 2009-12-16 | 2009-12-21 | 4d? | 0d | finish no earlier than 2009-12-24 |  | 杨炜林 | 40h |
| 228 | 5 | **测试阶段** |  | 3d | 2009-12-25 | 2009-12-29 | 2009-12-22 | 2009-12-25 | 4d? | 0d |  |  |  | 240h |
| 229 | 5.1 | 构建集成测试环境 |  | 1d | 2009-12-25 | 2009-12-25 | 2009-12-22 | 2009-12-25 | 4d? | 0d | start no earlier than 2009-12-25 |  | 宋秋玲; 彭舒 | 16h |
| 230 | 5.2 | 实施集成/系统测试 |  | 3d | 2009-12-25 | 2009-12-29 | 2009-12-22 | 2009-12-25 | 4d? | 0d | start no earlier than 2009-12-25 |  | 宋秋玲; 彭舒 | 48h |
| 231 | 5.3 | 管理缺陷 |  | 3d | 2009-12-25 | 2009-12-29 | 2009-12-22 | 2009-12-25 | 4d? | 0d | start no earlier than 2009-12-25 |  | 宋秋玲; 彭舒 | 48h |
| 232 | 5.4 | 回归测试 |  | 2d | 2009-12-28 | 2009-12-29 | 2009-12-22 | 2009-12-25 | 4d? | 0d | start no earlier than 2009-12-26 |  | 宋秋玲; 彭舒 | 32h |
| 233 | 5.5 | 编写测试总结报告 |  | 1d | 2009-12-29 | 2009-12-29 | 2009-12-22 | 2009-12-25 | 4d? | 0d | start no earlier than 2009-12-29 |  | 宋秋玲; 彭舒 | 16h |
| 234 | 5.6 | 编码与测试里程碑 | milestone | 1d | 2009-12-29 | 2009-12-29 | 2009-12-22 | 2009-12-25 | 4d? | 0d | start no earlier than 2009-12-29 |  | 高小川; 杨炜林; 张小东; 冯嘉希; 李焕宇; 庄阳; 胡丹; 王强; 肖明; 宋秋玲 | 80h |
| 235 | 6 | **验收部署** |  | 2d? | 2009-12-30 | 2009-12-31 |  |  |  | 0d |  |  |  | 80h |
| 236 | 6.1 | **部署准备** |  | 1d? | 2009-12-30 | 2009-12-30 | 2009-12-22 | 2009-12-25 | 4d? | 0d |  | 2009-12-31 |  | 56h |
| 237 | 6.1.1 | 制定部署计划 |  | 1d | 2009-12-30 | 2009-12-30 | 2009-12-22 | 2009-12-25 | 4d? | 1d | start no earlier than 2009-12-30 | 2009-12-31 | 杨炜林 | 8h |
| 238 | 6.1.2 | 编写用户手册 |  | 1d | 2009-12-30 | 2009-12-30 | 2009-12-22 | 2009-12-25 | 4d? | 1d | start no earlier than 2009-12-30 | 2009-12-31 | 冯嘉希; 胡丹; 李焕宇; 张小东 | 32h |
| 239 | 6.1.3 | 评审用户手册 |  | 1d? | 2009-12-30 | 2009-12-30 |  |  |  | 0d | start no earlier than 2009-12-30 |  |  |  |
| 240 | 6.1.4 | 编写系统安装手册 |  | 1d | 2009-12-30 | 2009-12-30 | 2009-12-22 | 2009-12-25 | 4d? | 1d | start no earlier than 2009-12-30 | 2009-12-31 | 杨炜林 | 8h |
| 241 | 6.1.5 | 编写培训手册 |  | 1d | 2009-12-30 | 2009-12-30 | 2009-12-22 | 2009-12-25 | 4d? | 1d | start no earlier than 2009-12-30 | 2009-12-31 | 杨炜林 | 8h |
| 242 | 6.2 | **环境准备** |  | 1d | 2009-12-30 | 2009-12-30 | 2009-12-22 | 2009-12-25 | 4d? | 1d |  | 2009-12-31 |  | 16h |
| 243 | 6.2.1 | 安装系统环境 |  | 1d | 2009-12-30 | 2009-12-30 | 2009-12-22 | 2009-12-25 | 4d? | 1d | start no earlier than 2009-12-30 | 2009-12-31 | 杨炜林 | 8h |
| 244 | 6.2.2 | 数据初始化 |  | 1d | 2009-12-30 | 2009-12-30 | 2009-12-22 | 2009-12-25 | 4d? | 1d | start no earlier than 2009-12-30 | 2009-12-31 | 杨炜林 | 8h |
| 245 | 6.3 | **验收测试** |  | 1d | 2009-12-31 | 2009-12-31 |  |  |  | 0d |  |  |  | 8h |
| 246 | 6.3.1 | 系统验收 |  | 1d | 2009-12-31 | 2009-12-31 | 2009-12-28 | 2009-12-28 | 1d | 0d | start no earlier than 2009-12-31 |  |  | 8h |
| 247 | 7 | **结项** |  | 1d? | 2009-12-31 | 2009-12-31 |  |  |  | 0d |  |  |  | 24h |
| 248 | 7.1 | 编制产成品清单 |  | 1d | 2009-12-31 | 2009-12-31 |  |  |  | 0d | start no earlier than 2009-12-31 |  | 杨炜林 | 8h |
| 249 | 7.2 | 按要求组织项目成果 |  | 1d? | 2009-12-31 | 2009-12-31 |  |  |  | 0d | start no earlier than 2009-12-31 |  | 杨炜林 | 8h |
| 250 | 7.3 | 编制项目总结报告 |  | 1d? | 2009-12-31 | 2009-12-31 |  |  |  | 0d | start no earlier than 2009-12-31 |  | 高小川 | 8h |

| ID | WBS | Task | Duration | Start | Finish | Remaining | Total slack | Constraint | Resources | Work |
| --- | --- | --- | --- | --- | --- | --- | --- | --- | --- | --- |
| 251 | 8 | **后期维护** | 66d | 2010-01-01 | 2010-04-02 |  | 0d |  |  |  |
| 252 | 8.1 | 进行系统维护 | 66d | 2010-01-01 | 2010-04-02 |  | 0d | start no earlier than 2010-01-01 |  |  |
| 253 | 9 | **项目管理** | 44d | 2009-11-02 A | 2009-12-31 | 44d | 0d |  |  | 2480h |
| 254 | 9.1 | **定期活动** | 44d | 2009-11-02 | 2009-12-31 |  | 0d |  |  | 720h |
| 255 | 9.1.1 | 周例会（每周五下午统计14：00至15：30） | 44d | 2009-11-02 | 2009-12-31 |  | 0d | finish no earlier than 2009-12-31 | 高小川 | 352h |
| 256 | 9.1.2 | 项目进度报告（每周五下午16：00至17：00） | 44d | 2009-11-02 | 2009-12-31 |  | 0d | finish no earlier than 2009-12-31 | 高小川 | 352h |
| 257 | 9.1.3 | **项目组内部培训** | 9d | 2009-11-16 | 2009-11-26 |  | 0d |  |  | 16h |
| 258 | 9.1.3.1 | IBM Rational RequisitePro需求管理工具使用说明 | 1d | 2009-11-16 | 2009-11-16 |  | 0d | start no earlier than 2009-11-16 | 高小川 | 8h |
| 259 | 9.1.3.2 | OpenCMS技术培训 | 1d | 2009-11-26 | 2009-11-26 |  | 0d | start no earlier than 2009-11-26 | 杨炜林 | 8h |
| 260 | 9.2 | **不定期活动** | 44d | 2009-11-02 A | 2009-12-31 | 44d | 0d |  |  | 1760h |
| 261 | 9.2.1 | 项目数据管理计划与跟踪 | 44d | 2009-11-02 A | 2009-12-31 | 44d | 0d | finish no earlier than 2009-12-31 | 高小川 | 352h |
| 262 | 9.2.2 | 项目软硬件资源监控 | 44d | 2009-11-02 A | 2009-12-31 | 44d | 0d | finish no earlier than 2009-12-31 | 高小川 | 352h |
| 263 | 9.2.3 | 项目问题跟踪 | 44d | 2009-11-02 A | 2009-12-31 | 44d | 0d | finish no earlier than 2009-12-31 | 高小川 | 352h |
| 264 | 9.2.4 | 项目关键依赖关系协调 | 44d | 2009-11-02 A | 2009-12-31 | 44d | 0d | finish no earlier than 2009-12-31 | 高小川 | 352h |
| 265 | 9.2.5 | 相关人员参与监控 | 44d | 2009-11-02 A | 2009-12-31 | 44d | 0d | finish no earlier than 2009-12-31 | 高小川 | 352h |
| 266 | 10 | **需求管理** | 44d? | 2009-11-02 | 2009-12-31 |  | 0d |  |  | 2112h |
| 267 | 10.1 | **定期活动** | 44d? | 2009-11-02 | 2009-12-31 |  | 0d |  |  | 704h |
| 268 | 10.1.1 | 获得对需求的理解 | 44d? | 2009-11-02 | 2009-12-31 |  | 0d | start no earlier than 2009-11-02 | 高小川 | 352h |
| 269 | 10.1.2 | 获得对需求的承诺 | 44d | 2009-11-02 | 2009-12-31 |  | 0d | start no earlier than 2009-11-02 | 高小川 | 352h |
| 270 | 10.2 | **不定期活动** | 44d? | 2009-11-02 | 2009-12-31 |  | 0d |  |  | 1408h |
| 271 | 10.2.1 | 维护需求跟踪矩阵 | 44d? | 2009-11-02 | 2009-12-31 |  | 0d | finish no earlier than 2009-12-31 | 高小川 | 352h |
| 272 | 10.2.2 | 管理需求的变化 | 44d | 2009-11-02 | 2009-12-31 |  | 0d | start no earlier than 2009-11-02 | 高小川 | 352h |
| 273 | 10.2.3 | 维护需求的双向跟踪性 | 44d | 2009-11-02 | 2009-12-31 |  | 0d | start no earlier than 2009-11-02 | 高小川 | 352h |
| 274 | 10.2.4 | 识别项目工作和需求的不一致 | 44d | 2009-11-02 | 2009-12-31 |  | 0d | start no earlier than 2009-11-02 | 高小川 | 352h |

| ID | WBS | Task | Duration | Start | Finish | Total slack | Constraint | Resources | Work |
| --- | --- | --- | --- | --- | --- | --- | --- | --- | --- |
| 275 | 11 | **项目环境** | 36d | 2009-11-02 | 2009-12-21 | 0d |  |  | 24h |
| 276 | 11.1 | **准备项目环境（开发环境和测试环境）** | 36d | 2009-11-02 | 2009-12-21 | 0d |  |  | 24h |
| 277 | 11.1.1 | 选择与获取工具 | 1d | 2009-11-02 | 2009-11-02 | 0d | start no earlier than 2009-11-02 | 杨炜林 | 8h |
| 278 | 11.1.2 | 搭建项目环境(开发环境) | 1d | 2009-11-02 | 2009-11-02 | 0d | start no earlier than 2009-11-02 | 杨炜林 | 8h |
| 279 | 11.1.3 | 搭建项目环境(测试环境) | 1d | 2009-12-21 | 2009-12-21 | 0d | start no earlier than 2009-12-21 | 杨炜林 | 8h |
| 280 | 12 | **软件过程与质量保证** | 44d? | 2009-11-02 | 2009-12-31 | 0d |  |  | 248h |
| 281 | 12.1 | 制定PPQA计划 | 2d | 2009-11-02 | 2009-11-03 | 0d | start no earlier than 2009-11-02 | 肖明 | 16h |
| 282 | 12.2 | **执行PPQA活动** | 42d? | 2009-11-04 | 2009-12-31 | 0d |  |  | 208h |
| 283 | 12.2.1 | **评价产品** | 39d? | 2009-11-04 | 2009-12-28 | 0d |  |  | 136h |
| 284 | 12.2.1.1 | 项目已定义过程 | 1d? | 2009-11-04 | 2009-11-04 | 0d | start no earlier than 2009-11-04 | 肖明 | 8h |
| 285 | 12.2.1.2 | 《可行性分析报告》和《可评测性报告》 | 1d? | 2009-11-06 | 2009-11-06 | 0d | start no earlier than 2009-11-06 | 肖明 | 8h |
| 286 | 12.2.1.3 | 计划工件 | 1d? | 2009-11-06 | 2009-11-06 | 0d | start no earlier than 2009-11-06 | 肖明 | 8h |
| 287 | 12.2.1.4 | 项目审批表 | 1d | 2009-11-06 | 2009-11-06 | 0d | start no earlier than 2009-11-06 | 肖明 | 8h |
| 288 | 12.2.1.5 | 涉众调研请求 | 1d | 2009-11-10 | 2009-11-10 | 0d | start no earlier than 2009-11-10 | 肖明 | 8h |
| 289 | 12.2.1.6 | 界面原型风格（设计原型DEMO） | 1d | 2009-11-13 | 2009-11-13 | 0d | start no earlier than 2009-11-13 | 肖明 | 8h |
| 290 | 12.2.1.7 | 软件需求规约 | 1d | 2009-11-18 | 2009-11-18 | 0d | start no earlier than 2009-11-18 | 肖明 | 8h |
| 291 | 12.2.1.8 | 前景文档、补充规约、词汇表、软件实现规约 | 1d | 2009-11-23 | 2009-11-23 | 0d | start no earlier than 2009-11-23 | 肖明 | 8h |
| 292 | 12.2.1.9 | 测试用例 | 1d | 2009-11-24 | 2009-11-24 | 0d | start no earlier than 2009-11-24 | 肖明 | 8h |
| 293 | 12.2.1.10 | 需求里程牌评审 | 1d | 2009-11-25 | 2009-11-25 | 0d | start no earlier than 2009-11-25 | 肖明 | 8h |
| 294 | 12.2.1.11 | 系统架构说明书 | 1d | 2009-12-03 | 2009-12-03 | 0d | start no earlier than 2009-12-03 | 肖明 | 8h |
| 295 | 12.2.1.12 | 数据模型工件 | 1d | 2009-12-03 | 2009-12-03 | 0d | start no earlier than 2009-12-03 | 肖明 | 8h |
| 296 | 12.2.1.13 | 分析模型与设计模型 | 1d | 2009-12-04 | 2009-12-04 | 0d | start no earlier than 2009-12-04 | 肖明 | 8h |
| 297 | 12.2.1.14 | 设计里程碑 | 1d | 2009-12-04 | 2009-12-04 | 0d | start no earlier than 2009-12-04 | 肖明 | 8h |
| 298 | 12.2.1.15 | 代码（软件模块）第一次 | 1d | 2009-12-14 | 2009-12-14 | 0d | start no earlier than 2009-12-12 | 肖明 | 8h |
| 299 | 12.2.1.16 | 代码（软件模块）第二次 | 1d | 2009-12-22 | 2009-12-22 | 0d | start no earlier than 2009-12-22 | 肖明 | 8h |
| 300 | 12.2.1.17 | 测试结果 | 1d | 2009-12-28 | 2009-12-28 | 0d | start no earlier than 2009-12-28 | 肖明 | 8h |

| ID | WBS | Task | Duration | Start | Finish | Total slack | Constraint | Resources | Work |
| --- | --- | --- | --- | --- | --- | --- | --- | --- | --- |
| 301 | 12.2.2 | **评价过程** | 41d | 2009-11-05 | 2009-12-31 | 0d |  |  | 72h |
| 302 | 12.2.2.1 | 项目策划过程 | 1d | 2009-11-05 | 2009-11-05 | 0d | start no earlier than 2009-11-05 | 肖明 | 8h |
| 303 | 12.2.2.2 | 需求设计过程第一次 | 1d | 2009-11-16 | 2009-11-16 | 0d | start no earlier than 2009-11-14 | 肖明 | 8h |
| 304 | 12.2.2.3 | 需求设计过程第二次 | 1d | 2009-11-23 | 2009-11-23 | 0d | start no earlier than 2009-11-22 | 肖明 | 8h |
| 305 | 12.2.2.4 | 分析设计过程 | 1d | 2009-11-30 | 2009-11-30 | 0d | start no earlier than 2009-11-30 | 肖明 | 8h |
| 306 | 12.2.2.5 | 编码过程 | 1d | 2009-12-18 | 2009-12-18 | 0d | start no earlier than 2009-12-18 | 肖明 | 8h |
| 307 | 12.2.2.6 | 测试过程 | 1d | 2009-12-28 | 2009-12-28 | 0d | start no earlier than 2009-12-27 | 肖明 | 8h |
| 308 | 12.2.2.7 | 编码与测试里程碑 | 1d | 2009-12-29 | 2009-12-29 | 0d | start no earlier than 2009-12-29 | 肖明 | 8h |
| 309 | 12.2.2.8 | 部署过程 | 1d | 2009-12-30 | 2009-12-30 | 0d | start no earlier than 2009-12-30 | 肖明 | 8h |
| 310 | 12.2.2.9 | 系统验收 | 1d | 2009-12-31 | 2009-12-31 | 0d | finish no earlier than 2009-12-31 | 肖明 | 8h |
| 311 | 12.3 | **建立PPQA活动记录** | 1d? | 2009-11-24 | 2009-11-24 | 0d |  |  | 8h |
| 312 | 12.3.1 | 填写不符合问题跟踪表 | 1d? | 2009-11-24 | 2009-11-24 | 0d | start no earlier than 2009-11-24 | 肖明 | 8h |
| 313 | 12.4 | 监督不符合问题的处理 | 1d? | 2009-11-24 | 2009-11-24 | 0d | start no earlier than 2009-11-24 | 肖明 | 8h |
| 314 | 12.5 | 报告过程和产品质量保证活动 | 1d? | 2009-11-24 | 2009-11-24 | 0d | start no earlier than 2009-11-24 | 肖明 | 8h |
| 315 | 13 | **配置管理** | 61d? | 2009-11-02 | 2010-01-25 | 0d |  |  | 4360h |
| 316 | 13.1 | **项目配置与变更控制** | 3d | 2009-11-04 | 2009-11-06 | 0d |  |  | 32h |
| 317 | 13.1.1 | 建立项目 CM 策略 | 2d | 2009-11-04 | 2009-11-05 | 0d | start no earlier than 2009-11-04 | 庄阳 | 16h |
| 318 | 13.1.2 | 编写 CM 计划 | 2d | 2009-11-05 | 2009-11-06 | 0d | start no earlier than 2009-11-05 | 庄阳 | 16h |
| 319 | 13.2 | **创建项目 CM 环境** | 5d | 2009-11-02 | 2009-11-06 | 0d |  |  | 80h |
| 320 | 13.2.1 | 构建 CM 环境 | 5d | 2009-11-02 | 2009-11-06 | 0d | start no earlier than 2009-11-02 | 庄阳 | 40h |
| 321 | 13.2.2 | 创建集成工作区 | 5d | 2009-11-02 | 2009-11-06 | 0d | start no earlier than 2009-11-02 | 庄阳 | 40h |
| 322 | 13.3 | **变更与交付配置项** | 44d | 2009-11-02 | 2009-12-31 | 0d |  |  | 1408h |
| 323 | 13.3.1 | 创建或更新开发工作区 | 44d | 2009-11-02 | 2009-12-31 | 0d | start no earlier than 2009-11-02 | 庄阳 | 352h |
| 324 | 13.3.2 | 变更配置项 | 44d | 2009-11-02 | 2009-12-31 | 0d | start no earlier than 2009-11-02 | 庄阳 | 352h |
| 325 | 13.3.3 | 交付变更内容 | 44d | 2009-11-02 | 2009-12-31 | 0d | start no earlier than 2009-11-02 | 庄阳 | 352h |
| 326 | 13.3.4 | 更新工作区 | 44d | 2009-11-02 | 2009-12-31 | 0d | start no earlier than 2009-11-02 | 庄阳 | 352h |

| ID | WBS | Task | Duration | Start | Finish | Total slack | Constraint | Resources | Work |
| --- | --- | --- | --- | --- | --- | --- | --- | --- | --- |
| 327 | 13.4 | **管理基线和发布** | 44d? | 2009-11-25 | 2010-01-25 | 0d |  |  | 376h |
| 328 | 13.4.1 | 创建需求基线 | 44d? | 2009-11-25 | 2010-01-25 | 0d | start no earlier than 2009-11-25 | 庄阳 | 352h |
| 329 | 13.4.2 | 创建设计基线 | 1d | 2009-12-04 | 2009-12-04 | 0d | finish no earlier than 2009-12-04 | 庄阳 | 8h |
| 330 | 13.4.3 | 创建开发基线 | 1d? | 2009-12-29 | 2009-12-29 | 0d | start no earlier than 2009-12-29 | 庄阳 | 8h |
| 331 | 13.4.4 | 创建产品基线 | 1d | 2009-12-31 | 2009-12-31 | 0d | finish no earlier than 2009-12-31 | 庄阳 | 8h |
| 332 | 13.5 | **管理变更请求** | 44d | 2009-11-02 | 2009-12-31 | 0d |  |  | 1760h |
| 333 | 13.5.1 | 提交变更请求 | 44d | 2009-11-02 | 2009-12-31 | 0d | start no earlier than 2009-11-02 | 庄阳 | 352h |
| 334 | 13.5.2 | 更新变更请求 | 44d | 2009-11-02 | 2009-12-31 | 0d | start no earlier than 2009-11-02 | 庄阳 | 352h |
| 335 | 13.5.3 | 复审变更请求 | 44d | 2009-11-02 | 2009-12-31 | 0d | start no earlier than 2009-11-02 | 庄阳 | 352h |
| 336 | 13.5.4 | 确认重复或已拒绝的变更请求 | 44d | 2009-11-02 | 2009-12-31 | 0d | start no earlier than 2009-11-02 | 庄阳 | 352h |
| 337 | 13.5.5 | 核实发布工作版本中的变更 | 44d | 2009-11-02 | 2009-12-31 | 0d | start no earlier than 2009-11-02 | 庄阳 | 352h |
| 338 | 13.6 | **监测与报告配置状态** | 44d | 2009-11-02 | 2009-12-31 | 0d |  |  | 704h |
| 339 | 13.6.1 | 报告配置状态 | 44d | 2009-11-02 | 2009-12-31 | 0d | start no earlier than 2009-11-02 | 庄阳 | 352h |
| 340 | 13.6.2 | 执行配置审计 | 44d | 2009-11-02 | 2009-12-31 | 0d | start no earlier than 2009-11-02 | 庄阳 | 352h |
| 341 | 14 | **度量分析** | 44d? | 2009-11-02 | 2009-12-31 | 0d |  |  | 40h |
| 342 | 14.1 | 建立度量计划 | 5d | 2009-11-02 | 2009-11-06 | 0d | start no earlier than 2009-11-02 | 高小川 | 40h |
| 343 | 14.2 | **采集度量数据** | 40d? | 2009-11-06 | 2009-12-31 | 0d |  |  |  |
| 344 | 14.2.1 | 第1周数据采集 | 1d? | 2009-11-06 | 2009-11-06 | 0d | start no earlier than 2009-11-06 |  |  |
| 345 | 14.2.2 | 第2周数据采集 | 1d? | 2009-11-13 | 2009-11-13 | 0d | start no earlier than 2009-11-13 |  |  |
| 346 | 14.2.3 | 第3周数据采集 | 1d? | 2009-11-20 | 2009-11-20 | 0d | start no earlier than 2009-11-20 |  |  |
| 347 | 14.2.4 | 第4周数据采集 | 1d? | 2009-11-27 | 2009-11-27 | 0d | start no earlier than 2009-11-27 |  |  |
| 348 | 14.2.5 | 第5周数据采集 | 1d? | 2009-12-04 | 2009-12-04 | 0d | start no earlier than 2009-12-04 |  |  |
| 349 | 14.2.6 | 第6周数据采集 | 1d? | 2009-12-11 | 2009-12-11 | 0d | start no earlier than 2009-12-11 |  |  |
| 350 | 14.2.7 | 第7周数据采集 | 1d? | 2009-12-18 | 2009-12-18 | 0d | start no earlier than 2009-12-18 |  |  |
| 351 | 14.2.8 | 第8周数据采集 | 1d? | 2009-12-25 | 2009-12-25 | 0d | start no earlier than 2009-12-25 |  |  |
| 352 | 14.2.9 | 第9周数据采集 | 1d? | 2009-12-31 | 2009-12-31 | 0d | start no earlier than 2009-12-31 |  |  |

| ID | WBS | Task | Duration | Start | Finish | Remaining | Total slack | Constraint | Resources | Work |
| --- | --- | --- | --- | --- | --- | --- | --- | --- | --- | --- |
| 353 | 14.3 | **分析度量数据** | 40d? | 2009-11-06 | 2009-12-31 |  | 0d |  |  |  |
| 354 | 14.3.1 | 第1周数据分析 | 1d? | 2009-11-06 | 2009-11-06 |  | 0d | start no earlier than 2009-11-06 |  |  |
| 355 | 14.3.2 | 第2周数据分析 | 1d? | 2009-11-13 | 2009-11-13 |  | 0d | start no earlier than 2009-11-13 |  |  |
| 356 | 14.3.3 | 第3周数据分析 | 1d? | 2009-11-20 | 2009-11-20 |  | 0d | start no earlier than 2009-11-20 |  |  |
| 357 | 14.3.4 | 第4周数据分析 | 1d? | 2009-11-27 | 2009-11-27 |  | 0d | start no earlier than 2009-11-27 |  |  |
| 358 | 14.3.5 | 第5周数据分析 | 1d? | 2009-12-04 | 2009-12-04 |  | 0d | start no earlier than 2009-12-04 |  |  |
| 359 | 14.3.6 | 第6周数据分析 | 1d? | 2009-12-11 | 2009-12-11 |  | 0d | start no earlier than 2009-12-11 |  |  |
| 360 | 14.3.7 | 第7周数据分析 | 1d? | 2009-12-18 | 2009-12-18 |  | 0d | start no earlier than 2009-12-18 |  |  |
| 361 | 14.3.8 | 第8周数据分析 | 1d? | 2009-12-25 | 2009-12-25 |  | 0d | start no earlier than 2009-12-25 |  |  |
| 362 | 14.3.9 | 第9周数据分析 | 1d? | 2009-12-31 | 2009-12-31 |  | 0d | start no earlier than 2009-12-31 |  |  |
| 363 | 15 | **决策与分析** | 1d | 2009-11-26 A | 2009-11-26 | 1d | 0d |  |  | 24h |
| 364 | 15.1 | 使用何种技术架构 | 1d | 2009-11-26 A | 2009-11-26 | 1d | 0d | start no earlier than 2009-11-23 | 高小川; 杨炜林; 王强 | 24h |
